Schedule from MS Project, 2026-03-02 to 2026-09-23, costs in ₽.
16 workers, 50000 rub, 6 months

## Calendars

- Standard: Mon-Fri 08:00-12:00, 13:00-17:00; Sat-Sun off. Exceptions (off unless hours are given): 2026-03-09 (8 march), 2026-04-30 09:00-12:00, 13:00-17:00 (1 may), 2026-05-01 (1 may), 2026-05-08 09:00-12:00, 13:00-17:00 (8 may), 2026-05-11 (11 may), 2026-06-11 09:00-12:00, 13:00-17:00 (11 june), 2026-06-12 (12 june).

## Resources

| Resource | Group | Rate | Cost per use |
| --- | --- | --- | --- |
| Ведущий программист | Программирование | 10 | 100 |
| Программист#1 | Программирование | 7 | 50 |
| Программист#2 | Программирование | 7 | 50 |
| Программист#3 | Программирование | 7 | 50 |
| Программист#4 | Программирование | 7 | 50 |
| Системный аналитик | Анализ | 20 | 300 |
| Художник-дизайнер | Дизайн | 8 | 70 |
| Технический писатель | Документация | 5 | 20 |
| Web-дизайнер | Internet | 7 | 50 |
| 3D аниматор | Дизайн | 8 | 70 |
| Мультимедия-корреспондент | М-медиа | 3 | 20 |
| Наборщик данных#1 | Ввод данных | 2 | 10 |
| Наборщик данных#2 | Ввод данных | 2 | 10 |
| Наборщик данных#3 | Ввод данных | 2 | 10 |
| Наборщик данных#4 | Ввод данных | 2 | 10 |
| Наборщик данных#5 | Ввод данных | 2 | 10 |
| Сервер | Аренда | 2 |  |

## Schedule

| ID | WBS | Task | Type | Duration | Start | Finish | Predecessors | Total slack | Free slack | Resources | Work | Cost |
| --- | --- | --- | --- | --- | --- | --- | --- | --- | --- | --- | --- | --- |
| 1 | 1 | Начало проекта | milestone | 0d | 2026-03-02 09:00 | 2026-03-02 09:00 |  | 71.62d | 0d |  |  |  |
| 2 | 2 | **Создание интерфейса** |  | 112.25d | 2026-03-02 09:00 | 2026-08-11 15:00 | 1 | 0d |  |  | 560h | 5,550 |
| 3 | 2.1 | **Разработка дизайна интерфейса** |  | 25.62d | 2026-03-02 09:00 | 2026-04-07 15:00 |  | 71.62d | 0d |  | 320h | 2,770 |
| 4 | 2.1.1 | Разработка 2D графических элементов |  | 3w | 2026-03-02 09:00 | 2026-03-24 12:00 |  | 71.62d | 0d | Художник-дизайнер | 120h | 1,030 |
| 5 | 2.1.2 | Разработка 3D графических элементов |  | 2w | 2026-03-02 09:00 | 2026-03-17 11:00 | 4SS | 71.62d | 0d | 3D аниматор | 80h | 710 |
| 6 | 2.1.3 | Создание заставки |  | 3w | 2026-03-17 11:00 | 2026-04-07 15:00 | 5 | 71.62d |  | 3D аниматор | 120h | 1,030 |
| 7 | 2.2 | Программирование интерфейса |  | 3w | 2026-07-21 15:00 | 2026-08-11 15:00 | 3, 12 | 0d |  | Программист#3; Программист#4 | 240h | 1,780 |
| 8 | 3 | **Построение базы объектов** |  | 85.25d | 2026-03-24 13:00 | 2026-07-27 09:00 |  | 42.62d |  | Сервер | 5716h | 15,522 |
| 9 | 3.1 | Анализ и построение структуры базы объектов |  | 2w | 2026-03-24 13:00 | 2026-04-07 15:00 |  | 42.62d | 0d | Системный аналитик | 80h | 1,900 |
| 10 | 3.2 | Программирование средств обработки базы объектов |  | 3w | 2026-04-07 15:00 | 2026-04-28 15:00 | 9 | 42.62d | 0d | Программист#3; Программист#4 | 240h | 1,780 |
| 11 | 3.3 | Наполнение базы объектов |  | 12w | 2026-04-28 15:00 | 2026-07-27 09:00 | 10 | 42.62d |  | Наборщик данных#1; Наборщик данных#2; Наборщик данных#3; Наборщик данных#4; Наборщик данных#5 | 2400h | 4,850 |
| 12 | 4 | **Создание ядра GIS** |  | 97.25d | 2026-03-02 09:00 | 2026-07-21 15:00 |  | 0d |  |  | 1880h | 18,680 |
| 13 | 4.1 | Анализ и проектирование ядра |  | 3w | 2026-03-02 09:00 | 2026-03-24 12:00 |  | 0d |  | Ведущий программист; Системный аналитик | 240h | 4,000 |
| 14 | 4.2 | Создание модели ядра |  | 5.12w | 2026-03-24 13:00 | 2026-04-29 09:00 | 13 | 0d |  | Ведущий программист; Программист#1 | 400h | 3,550 |
| 15 | 4.3 | Тестирование модели ядра |  | 1w | 2026-04-29 09:00 | 2026-05-07 10:00 | 14 | 0d |  | Программист#1 | 40h | 330 |
| 16 | 4.4 | Создание рабочей версии ядра |  | 10.25w | 2026-05-07 10:00 | 2026-07-21 15:00 | 15 | 0d |  | Ведущий программист; Программист#1; Программист#2 | 1200h | 9,800 |
| 17 | 5 | Создание мультимедия - наполнения |  | 6w | 2026-04-07 15:00 | 2026-05-22 16:00 | 3 | 86.75d |  | Мультимедия-корреспондент | 240h | 740 |
| 18 | 6 | Создание справочной системы |  | 2w | 2026-08-24 08:00 | 2026-09-07 10:00 | 7 | 12.5d |  | Технический писатель | 80h | 420 |
| 19 | 7 | **Создание руководства пользователя** |  | 17.38d | 2026-07-28 15:00 | 2026-08-21 09:00 | 7FS-10d | 0d |  |  | 160h | 1,010 |
| 20 | 7.1 | Разработка дизайна руководства |  | 1w | 2026-07-28 15:00 | 2026-08-04 16:00 |  | 0d |  | Художник-дизайнер | 40h | 390 |
| 21 | 7.2 | Написание руководства пользователя |  | 3w | 2026-07-30 15:00 | 2026-08-21 09:00 | 20SS+2d | 0d |  | Технический писатель | 120h | 620 |
| 22 | 8 | **Создание web - сайта и поддержка** |  | 23.62d | 2026-07-30 15:00 | 2026-09-02 11:00 |  | 0d |  |  | 248h | 2,106 |
| 23 | 8.1 | Разработка структуры сайта |  | 1d | 2026-07-30 15:00 | 2026-07-31 15:00 | 21SS | 0d |  | Web-дизайнер | 8h | 106 |
| 24 | 8.2 | Разработка дизайна сайта |  | 1.43w | 2026-07-31 15:00 | 2026-08-11 17:00 | 23 | 0d |  | 3D аниматор; Web-дизайнер; Художник-дизайнер | 120h | 1,110 |
| 25 | 8.3 | Наполнение сайта |  | 3w | 2026-08-12 08:00 | 2026-09-02 11:00 | 24 | 0d |  | Web-дизайнер | 120h | 890 |
| 26 | 9 | Тестирование сайта |  | 4.08w | 2026-08-26 11:00 | 2026-09-23 15:00 | 22FS-1w | 0d |  | Ведущий программист; Программист#1; Программист#2 | 480h | 4,040 |
| 27 | 10 | Сдача сайта в эксплуатацию | milestone | 0d | 2026-09-23 15:00 | 2026-09-23 15:00 | 26 | 0d |  |  |  |  |

| ID | WBS | Task | Type | Duration | Start | Finish | Total slack | Constraint | Resources | Work | Cost |
| --- | --- | --- | --- | --- | --- | --- | --- | --- | --- | --- | --- |
| 28 | 11 | **Совещание** |  | 135.75d | 2026-03-04 09:00 | 2026-09-16 10:00 | 0d |  |  | 203h | 1,769 |
| 29 | 11.1 | Совещание 1 | manual | 1h | 2026-03-04 09:00 | 2026-03-04 10:00 |  | start no earlier than 2026-03-04 09:00 | 3D аниматор; Web-дизайнер; Ведущий программист; Мультимедия-корреспондент; Системный аналитик; Технический писатель; Художник-дизайнер | 7h | 61 |
| 30 | 11.2 | Совещание 2 | manual | 1h | 2026-03-11 09:00 | 2026-03-11 10:00 |  | start no earlier than 2026-03-11 09:00 | 3D аниматор; Web-дизайнер; Ведущий программист; Мультимедия-корреспондент; Системный аналитик; Технический писатель; Художник-дизайнер | 7h | 61 |
| 31 | 11.3 | Совещание 3 | manual | 1h | 2026-03-18 09:00 | 2026-03-18 10:00 |  | start no earlier than 2026-03-18 09:00 | 3D аниматор; Web-дизайнер; Ведущий программист; Мультимедия-корреспондент; Системный аналитик; Технический писатель; Художник-дизайнер | 7h | 61 |
| 32 | 11.4 | Совещание 4 | manual | 1h | 2026-03-25 09:00 | 2026-03-25 10:00 |  | start no earlier than 2026-03-25 09:00 | 3D аниматор; Web-дизайнер; Ведущий программист; Мультимедия-корреспондент; Системный аналитик; Технический писатель; Художник-дизайнер | 7h | 61 |
| 33 | 11.5 | Совещание 5 | manual | 1h | 2026-04-01 09:00 | 2026-04-01 10:00 |  | start no earlier than 2026-04-01 09:00 | 3D аниматор; Web-дизайнер; Ведущий программист; Мультимедия-корреспондент; Системный аналитик; Технический писатель; Художник-дизайнер | 7h | 61 |
| 34 | 11.6 | Совещание 6 | manual | 1h | 2026-04-08 09:00 | 2026-04-08 10:00 |  | start no earlier than 2026-04-08 09:00 | 3D аниматор; Web-дизайнер; Ведущий программист; Мультимедия-корреспондент; Системный аналитик; Технический писатель; Художник-дизайнер | 7h | 61 |
| 35 | 11.7 | Совещание 7 | manual | 1h | 2026-04-15 09:00 | 2026-04-15 10:00 |  | start no earlier than 2026-04-15 09:00 | 3D аниматор; Web-дизайнер; Ведущий программист; Мультимедия-корреспондент; Системный аналитик; Технический писатель; Художник-дизайнер | 7h | 61 |
| 36 | 11.8 | Совещание 8 | manual | 1h | 2026-04-22 09:00 | 2026-04-22 10:00 |  | start no earlier than 2026-04-22 09:00 | 3D аниматор; Web-дизайнер; Ведущий программист; Мультимедия-корреспондент; Системный аналитик; Технический писатель; Художник-дизайнер | 7h | 61 |
| 37 | 11.9 | Совещание 9 | manual | 1h | 2026-04-29 09:00 | 2026-04-29 10:00 |  | start no earlier than 2026-04-29 09:00 | 3D аниматор; Web-дизайнер; Ведущий программист; Мультимедия-корреспондент; Системный аналитик; Технический писатель; Художник-дизайнер | 7h | 61 |
| 38 | 11.10 | Совещание 10 | manual | 1h | 2026-05-06 09:00 | 2026-05-06 10:00 |  | start no earlier than 2026-05-06 09:00 | 3D аниматор; Web-дизайнер; Ведущий программист; Мультимедия-корреспондент; Системный аналитик; Технический писатель; Художник-дизайнер | 7h | 61 |
| 39 | 11.11 | Совещание 11 | manual | 1h | 2026-05-13 09:00 | 2026-05-13 10:00 |  | start no earlier than 2026-05-13 09:00 | 3D аниматор; Web-дизайнер; Ведущий программист; Мультимедия-корреспондент; Системный аналитик; Технический писатель; Художник-дизайнер | 7h | 61 |
| 40 | 11.12 | Совещание 12 | manual | 1h | 2026-05-20 09:00 | 2026-05-20 10:00 |  | start no earlier than 2026-05-20 09:00 | 3D аниматор; Web-дизайнер; Ведущий программист; Мультимедия-корреспондент; Системный аналитик; Технический писатель; Художник-дизайнер | 7h | 61 |
| 41 | 11.13 | Совещание 13 | manual | 1h | 2026-05-27 09:00 | 2026-05-27 10:00 |  | start no earlier than 2026-05-27 09:00 | 3D аниматор; Web-дизайнер; Ведущий программист; Мультимедия-корреспондент; Системный аналитик; Технический писатель; Художник-дизайнер | 7h | 61 |
| 42 | 11.14 | Совещание 14 | manual | 1h | 2026-06-03 09:00 | 2026-06-03 10:00 |  | start no earlier than 2026-06-03 09:00 | 3D аниматор; Web-дизайнер; Ведущий программист; Мультимедия-корреспондент; Системный аналитик; Технический писатель; Художник-дизайнер | 7h | 61 |
| 43 | 11.15 | Совещание 15 | manual | 1h | 2026-06-10 09:00 | 2026-06-10 10:00 |  | start no earlier than 2026-06-10 09:00 | 3D аниматор; Web-дизайнер; Ведущий программист; Мультимедия-корреспондент; Системный аналитик; Технический писатель; Художник-дизайнер | 7h | 61 |
| 44 | 11.16 | Совещание 16 | manual | 1h | 2026-06-17 09:00 | 2026-06-17 10:00 |  | start no earlier than 2026-06-17 09:00 | 3D аниматор; Web-дизайнер; Ведущий программист; Мультимедия-корреспондент; Системный аналитик; Технический писатель; Художник-дизайнер | 7h | 61 |
| 45 | 11.17 | Совещание 17 | manual | 1h | 2026-06-24 09:00 | 2026-06-24 10:00 |  | start no earlier than 2026-06-24 09:00 | 3D аниматор; Web-дизайнер; Ведущий программист; Мультимедия-корреспондент; Системный аналитик; Технический писатель; Художник-дизайнер | 7h | 61 |
| 46 | 11.18 | Совещание 18 | manual | 1h | 2026-07-01 09:00 | 2026-07-01 10:00 |  | start no earlier than 2026-07-01 09:00 | 3D аниматор; Web-дизайнер; Ведущий программист; Мультимедия-корреспондент; Системный аналитик; Технический писатель; Художник-дизайнер | 7h | 61 |
| 47 | 11.19 | Совещание 19 | manual | 1h | 2026-07-08 09:00 | 2026-07-08 10:00 |  | start no earlier than 2026-07-08 09:00 | 3D аниматор; Web-дизайнер; Ведущий программист; Мультимедия-корреспондент; Системный аналитик; Технический писатель; Художник-дизайнер | 7h | 61 |
| 48 | 11.20 | Совещание 20 | manual | 1h | 2026-07-15 09:00 | 2026-07-15 10:00 |  | start no earlier than 2026-07-15 09:00 | 3D аниматор; Web-дизайнер; Ведущий программист; Мультимедия-корреспондент; Системный аналитик; Технический писатель; Художник-дизайнер | 7h | 61 |
| 49 | 11.21 | Совещание 21 | manual | 1h | 2026-07-22 09:00 | 2026-07-22 10:00 |  | start no earlier than 2026-07-22 09:00 | 3D аниматор; Web-дизайнер; Ведущий программист; Мультимедия-корреспондент; Системный аналитик; Технический писатель; Художник-дизайнер | 7h | 61 |
| 50 | 11.22 | Совещание 22 | manual | 1h | 2026-07-29 09:00 | 2026-07-29 10:00 |  | start no earlier than 2026-07-29 09:00 | 3D аниматор; Web-дизайнер; Ведущий программист; Мультимедия-корреспондент; Системный аналитик; Технический писатель; Художник-дизайнер | 7h | 61 |
| 51 | 11.23 | Совещание 23 | manual | 1h | 2026-08-05 09:00 | 2026-08-05 10:00 |  | start no earlier than 2026-08-05 09:00 | 3D аниматор; Web-дизайнер; Ведущий программист; Мультимедия-корреспондент; Системный аналитик; Технический писатель; Художник-дизайнер | 7h | 61 |
| 52 | 11.24 | Совещание 24 | manual | 1h | 2026-08-12 09:00 | 2026-08-12 10:00 |  | start no earlier than 2026-08-12 09:00 | 3D аниматор; Web-дизайнер; Ведущий программист; Мультимедия-корреспондент; Системный аналитик; Технический писатель; Художник-дизайнер | 7h | 61 |
| 53 | 11.25 | Совещание 25 | manual | 1h | 2026-08-19 09:00 | 2026-08-19 10:00 |  | start no earlier than 2026-08-19 09:00 | 3D аниматор; Web-дизайнер; Ведущий программист; Мультимедия-корреспондент; Системный аналитик; Технический писатель; Художник-дизайнер | 7h | 61 |
| 54 | 11.26 | Совещание 26 | manual | 1h | 2026-08-26 09:00 | 2026-08-26 10:00 |  | start no earlier than 2026-08-26 09:00 | 3D аниматор; Web-дизайнер; Ведущий программист; Мультимедия-корреспондент; Системный аналитик; Технический писатель; Художник-дизайнер | 7h | 61 |
| 55 | 11.27 | Совещание 27 | manual | 1h | 2026-09-02 09:00 | 2026-09-02 10:00 |  | start no earlier than 2026-09-02 09:00 | 3D аниматор; Web-дизайнер; Ведущий программист; Мультимедия-корреспондент; Системный аналитик; Технический писатель; Художник-дизайнер | 7h | 61 |
| 56 | 11.28 | Совещание 28 | manual | 1h | 2026-09-09 09:00 | 2026-09-09 10:00 |  | start no earlier than 2026-09-09 09:00 | 3D аниматор; Web-дизайнер; Ведущий программист; Мультимедия-корреспондент; Системный аналитик; Технический писатель; Художник-дизайнер | 7h | 61 |
| 57 | 11.29 | Совещание 29 | manual | 1h | 2026-09-16 09:00 | 2026-09-16 10:00 |  | start no earlier than 2026-09-16 09:00 | 3D аниматор; Web-дизайнер; Ведущий программист; Мультимедия-корреспондент; Системный аналитик; Технический писатель; Художник-дизайнер | 7h | 61 |
